# Gantt

Schedule from MS Project, 2016-01-10 to 2016-03-14.
diakov.net

## Calendars

- 24 часа: Mon-Sun 00:00-24:00.

## Resources

| Resource |
| --- |
| Дмитрий Яковлев |
| Заказчик |
| Евгений Громов |
| Михаил Ериков |

## Schedule

| ID | WBS | Task | Type | Duration | Start | Finish | Predecessors | Baseline start | Baseline finish | Baseline duration | Total slack | Free slack | Resources | Work |
| --- | --- | --- | --- | --- | --- | --- | --- | --- | --- | --- | --- | --- | --- | --- |
| 1 | 1 | **Выполнение коммандного проекта** |  | 193.12d | 2016-01-10 | 2016-03-14 |  | 2016-01-10 | 2016-03-14 | 193.12d |  |  |  | 218h |
| 2 | 1.1 | Начало проекта | milestone | 0h | 2016-01-10 | 2016-01-10 |  | 2016-01-10 | 2016-01-10 |  | 193.12d |  |  |  |
| 3 | 1.2 | **Составление технического задания** |  | 54.88d | 2016-01-10 | 2016-01-28 |  | 2016-01-10 | 2016-01-28 | 54.88d | -2.5d | 0d |  | 40h |
| 4 | 1.2.1 | Обсуждение требований с заказчиком |  | 20h | 2016-01-10 | 2016-01-18 |  | 2016-01-10 | 2016-01-18 | 20h | -1.38d | 0d | Дмитрий Яковлев [50%]; Заказчик | 10h |
| 5 | 1.2.2 | Проработка требований |  | 10h | 2016-01-19 | 2016-01-20 | 4 | 2016-01-19 | 2016-01-20 | 10h | -1.62d | 0d | Дмитрий Яковлев; Евгений Громов; Михаил Ериков | 15h |
| 6 | 1.2.3 | Разработка технического задания |  | 13h | 2016-01-21 | 2016-01-22 | 5 | 2016-01-21 | 2016-01-22 | 13h | -2.88d | 0d | Евгений Громов | 13h |
| 7 | 1.2.4 | Согласование технического задания с заказчиком |  | 2h | 2016-01-22 | 2016-01-28 | 6 | 2016-01-22 | 2016-01-28 | 2h | -5.12d | 0d | Дмитрий Яковлев; Заказчик | 2h |
| 8 | 1.2.5 | Окончание составления технического задания | milestone | 0h | 2016-01-28 | 2016-01-28 | 7 | 2016-01-28 | 2016-01-28 |  | -2.5d | 0d |  |  |
| 9 | 1.3 | **Разработка системы: спринт 1** |  | 25.38d? | 2016-01-28 | 2016-02-06 |  | 2016-01-28 | 2016-02-06 | 25.38d? | -3d | 0d |  | 24h |
| 10 | 1.3.1 | Разработка модели |  | 3d? | 2016-01-28 | 2016-02-05 | 8 | 2016-01-28 | 2016-02-05 | 3d? | -3d | 0d | Дмитрий Яковлев | 24h |
| 11 | 1.3.2 | Окончание спринта 1 | milestone | 1d? | 2016-02-05 | 2016-02-06 | 10 | 2016-02-05 | 2016-02-06 | 1d? | -1.12d | 0d |  |  |
| 12 | 1.4 | **Разработка системы: спринт 2** |  | 24.88d? | 2016-02-09 | 2016-02-18 | 19 | 2016-02-06 | 2016-02-14 | 22.25d? | -0.12d | 0d |  | 20h |
| 13 | 1.4.1 | Разработка модели системы |  | 20h | 2016-02-09 | 2016-02-17 |  | 2016-02-06 | 2016-02-13 | 20h | -2.75d | 0d | Дмитрий Яковлев | 20h |
| 14 | 1.4.2 | Окончание спринта 2 | milestone | 1d? | 2016-02-17 | 2016-02-18 | 13 | 2016-02-13 | 2016-02-14 | 1d? | -0.12d | 0d |  |  |
| 15 | 1.5 | **Разработа системы: спринт 3** |  | 32.88d? | 2016-02-29 | 2016-03-11 | 20 | 2016-02-15 | 2016-02-26 | 32.88d? | -5.88d | 0d |  | 58h |
| 16 | 1.5.1 | Разработка GUI |  | 50h | 2016-03-03 | 2016-03-11 | 17 | 2016-02-18 | 2016-02-26 | 50h | -2d | 0d | Михаил Ериков | 50h |
| 17 | 1.5.2 | Разработка CLI |  | 1d? | 2016-02-29 | 2016-03-02 |  | 2016-02-15 | 2016-02-17 | 1d? | -5.88d | 0d | Дмитрий Яковлев | 8h |
| 18 | 1.5.3 | Окончание спринта 3 | milestone | 1d? | 2016-03-11 | 2016-03-11 | 16 | 2016-02-26 | 2016-02-26 | 1d? | -0.12d | 0d |  |  |
| 19 | 1.6 | Применен риск: недостаточно времени для освоения технологий |  | 1d? | 2016-02-06 | 2016-02-09 | 9 |  |  |  | -2.75d | 0d | Дмитрий Яковлев | 8h |
| 20 | 1.7 | Применен риск: недостаточно времени для освоения технологий |  | 1.25d? | 2016-02-26 | 2016-02-29 | 21 |  |  |  | -8.38d | 0d | Евгений Громов | 10h |
| 21 | 1.8 | Примерен риск: Ериков отсутствовал на проекте |  | 5.5d? | 2016-02-18 | 2016-02-26 | 12 |  |  |  | -2.38d | 0d | Евгений Громов | 44h |
| 22 | 1.9 | **Тестирование и отладка системы** |  | 67.12d | 2016-02-18 | 2016-03-11 |  | 2016-02-15 | 2016-02-26 | 34.12d | -0.12d | 0d |  | 6h |
| 23 | 1.9.1 | Тестирование и отладка модели системы |  | 6h | 2016-02-18 | 2016-02-18 | 14 | 2016-02-15 | 2016-02-15 | 6h | 63.25d | 60.25d | Евгений Громов [50%] | 3h |
| 24 | 1.9.2 | Тестирование и отладка интерфейса системы |  | 6h | 2016-03-11 | 2016-03-11 | 18SS | 2016-02-26 | 2016-02-26 | 6h | -0.12d | 0d | Евгений Громов [50%] | 3h |
| 25 | 1.9.3 | Окончание тестирования и отладки | milestone | 0h | 2016-03-11 | 2016-03-11 | 23, 24 | 2016-02-26 | 2016-02-26 |  | -0.12d | 0d |  |  |

| ID | WBS | Task | Type | Duration | Start | Finish | Predecessors | Baseline start | Baseline finish | Baseline duration | Total slack | Free slack | Resources | Work |
| --- | --- | --- | --- | --- | --- | --- | --- | --- | --- | --- | --- | --- | --- | --- |
| 26 | 1.10 | **Разработка документации** |  | 2.75d | 2016-03-11 | 2016-03-12 | 25 | 2016-02-26 | 2016-02-27 | 3.38d | -0.12d | 0d |  | 6h |
| 27 | 1.10.1 | Разработка пояснительной записки |  | 2h | 2016-03-11 | 2016-03-11 |  | 2016-02-26 | 2016-02-26 | 2h | -0.12d | 0d | Дмитрий Яковлев | 2h |
| 28 | 1.10.2 | Разработка руководства оператора |  | 2h | 2016-03-11 | 2016-03-12 | 27 | 2016-02-26 | 2016-02-27 | 2h | -2.12d | 0d | Дмитрий Яковлев | 2h |
| 29 | 1.10.3 | Разработка программы и методики испытаний |  | 1h | 2016-03-12 | 2016-03-12 | 28 | 2016-02-27 | 2016-02-27 | 1h | -0.12d | 0d | Дмитрий Яковлев | 1h |
| 30 | 1.10.4 | Разработка текста программы |  | 1h | 2016-03-12 | 2016-03-12 | 29 | 2016-02-27 | 2016-02-27 | 1h | -0.12d | 0d | Дмитрий Яковлев | 1h |
| 31 | 1.10.5 | Окончание разработки документации | milestone | 0h | 2016-03-12 | 2016-03-12 | 30 | 2016-02-27 | 2016-02-27 |  | -0.12d | 0d |  |  |
| 32 | 1.11 | Передача проекта заказчику |  | 2h | 2016-03-14 | 2016-03-14 | 31 | 2016-02-27 | 2016-03-01 | 5h | -6.25d | 0d | Дмитрий Яковлев | 2h |
| 33 | 1.12 | Окончание работы с проектом | milestone | 0d | 2016-03-14 | 2016-03-14 | 32 | 2016-03-01 | 2016-03-01 |  | -0.12d | 0d |  |  |
